Schedule from GanttProject, 2017-02-13 to 2017-04-14.

## Calendars

- Project calendar: Mon-Sun working.

## Resources

| Resource |
| --- |
| mirfan |
| ashahid |
| ansarif |
| jsyed |
| muusman |
| bwasim |
| msalman |
| mkaleem |

## Schedule

| ID | WBS | Task | Duration | Start | Finish | Complete | Resources | Jira |
| --- | --- | --- | --- | --- | --- | --- | --- | --- |
| 1 | 1 | **Project** | 61d | 2017-02-13 | 2017-04-14 | 62% |  |  |
| 2 | 1.1 | **Unified BSP** | 46d | 2017-02-28 | 2017-04-14 | 46% |  | BSP-8345 |
| 3 | 1.1.1 | **New BSP Structure and Integration** | 39d | 2017-02-28 | 2017-04-07 | 47% |  | BSP-8357 |
| 4 | 1.1.1.1 | Unified BSP Interface proposal | 11d | 2017-02-28 | 2017-03-10 | 100% | mirfan | BSP-8264 |
| 5 | 1.1.1.2 | Unifying BSP Initialization flow for NRS and SC BSPs | 4d | 2017-03-31 | 2017-04-03 |  | ashahid | BSP-8353 |
| 6 | 1.1.1.3 | Integration of SC BSP with DM | 3d | 2017-03-27 | 2017-03-29 | 33% | ashahid | BSP-8354 |
| 7 | 1.1.1.4 | Integration of Unified drivers and updated BSPs | 3d | 2017-04-04 | 2017-04-06 |  | ashahid | BSP-8355 |
| 8 | 1.1.1.5 | Integration of Unified drivers and updated BSPs | 5d | 2017-04-07 | 2017-04-11 |  | mirfan | BSP-8356 |
| 9 | 1.1.2 | **Unified Serial Driver** | 38d | 2017-03-01 | 2017-04-07 | 76% |  | BSP-8221 |
| 10 | 1.1.2.1 | **Design** | 17d | 2017-03-01 | 2017-03-17 | 67% |  | BSP-8227 |
| 11 | 1.1.2.1.1 | Unified BSP Interface proposal | 17d | 2017-03-01 | 2017-03-17 | 67% | ashahid | BSP-8225 |
| 12 | 1.1.2.2 | Serial Driver implementation | 7d | 2017-03-14 | 2017-03-20 | 98% | ashahid | BSP-8229 |
| 13 | 1.1.3 | **Unified Ethernet Driver** | 31d | 2017-03-15 | 2017-04-14 | 34% |  | BSP-8306 |
| 14 | 1.1.3.1 | Discuss and finalize the Nucleus Buffers proposal | 6d | 2017-03-22 | 2017-03-27 | 100% | ansarif | BSP-8326 |
| 15 | 1.1.3.2 | Implement Nucleus Buffers support | 8d | 2017-03-31 | 2017-04-07 |  | jsyed | BSP-8327 |
| 16 | 1.1.3.3 | Update LWNET to use the new driver and Nucleus Buffers | 19d | 2017-03-27 | 2017-04-14 | 17% | muusman | BSP-8325 |
| 17 | 1.1.3.4 | Define a new BSP and OS driver interface for the Ethernet driver (BSP team and MW team) | 3d | 2017-03-15 | 2017-03-17 | 80% | ansarif | BSP-8324 |
| 18 | 1.1.3.5 | Unified Ethernet driver Implementation for Sabrelite | 12d | 2017-03-20 | 2017-03-31 | 55% | bwasim | BSP-8230 |
| 19 | 1.2 | **Device Manager Remodal** | 47d | 2017-02-13 | 2017-03-31 | 98% |  | BSP-8299 |
| 20 | 1.2.1 | **Design** | 16d | 2017-02-13 | 2017-02-28 | 100% |  | BSP-8227 |
| 21 | 1.2.1.1 | Device Manager Code Review | 16d | 2017-02-13 | 2017-02-28 | 100% | mirfan | BSP-8223 |
| 22 | 1.2.1.2 | Prepare a proposal to remodal Device Manager | 16d | 2017-02-13 | 2017-02-28 | 100% | ashahid | BSP-8222 |
| 23 | 1.2.2 | **Device Manager implementation** | 19d | 2017-03-13 | 2017-03-31 | 94% |  | BSP-8228 |
| 24 | 1.2.2.1 | **Device Labels update** | 2d | 2017-03-13 | 2017-03-14 | 100% | mirfan | OS-7561 |
| 25 | 1.2.2.1.1 | Implement new labeling scheme for Device Manager | 2d | 2017-03-13 | 2017-03-14 | 100% | msalman | OS-7541 |
| 26 | 1.2.2.1.2 | Update the Device Manager metadata files to generate labels. | 1d | 2017-03-14 | 2017-03-14 | 100% | msalman | OS-7542 |

| ID | WBS | Task | Duration | Start | Finish | Complete | Resources | Jira |
| --- | --- | --- | --- | --- | --- | --- | --- | --- |
| 27 | 1.2.2.2 | **Updates to Device Registry** | 5d | 2017-03-13 | 2017-03-17 | 100% | mirfan | OS-7543 |
| 28 | 1.2.2.2.1 | Removal of device sessions form Device Manager. | 1d | 2017-03-13 | 2017-03-13 | 100% | mkaleem | OS-7544 |
| 29 | 1.2.2.2.2 | Update device Open/Close mechanism to handle removal of device sessions form Device Manager | 2d | 2017-03-16 | 2017-03-17 | 100% | mkaleem | OS-7545 |
| 30 | 1.2.2.3 | **Device Functionality Lists** | 14d | 2017-03-14 | 2017-03-27 | 100% | mirfan | OS-7546 |
| 31 | 1.2.2.3.1 | Add support of Functionality lists to Device Manager | -3d | 2017-03-31 | 2017-03-31 | -100% | mkaleem | OS-7547 |
| 32 | 1.2.2.3.2 | Update device registration flow via DVC_Dev_Register. | 1d | 2017-03-15 | 2017-03-15 | 100% | mkaleem | OS-7548 |
| 33 | 1.2.2.3.3 | Update device unregistration flow via DVC_Dev_Unregister. | 1d | 2017-03-14 | 2017-03-14 | 100% | mkaleem | OS-7549 |
| 34 | 1.2.2.4 | **Device Manager New APIs** | 1d | 2017-03-15 | 2017-03-15 | 100% | mirfan | OS-7550 |
| 35 | 1.2.2.4.1 | Implement DVC_Dev_Request API | 1d | 2017-03-15 | 2017-03-15 | 100% | msalman | OS-7551 |
| 36 | 1.2.2.4.2 | Implement DVC_Dev_Get_Instance API. | 1d | 2017-03-15 | 2017-03-15 | 100% | msalman | OS-7552 |
| 37 | 1.2.2.5 | **Device Manager Deprecated APIs** | 1d | 2017-03-16 | 2017-03-16 | 100% | mirfan | OS-7553 |
| 38 | 1.2.2.5.1 | Remove Device Manager's deprecated APIs (DVC_Dev_Read/Write and DVC_Dev_IOCTL) | 1d | 2017-03-16 | 2017-03-16 | 100% | msalman | OS-7554 |
| 39 | 1.2.2.6 | **Device Discovery Mechanism** | 3d | 2017-03-29 | 2017-03-31 | 82% | mirfan | OS-7556 |
| 40 | 1.2.2.6.1 | Remove known_id_list and its references from device discovery | 1d | 2017-03-31 | 2017-03-31 | -100% | mkaleem | OS-7557 |
| 41 | 1.2.2.6.2 | Implement APIs and code updated for cases where new device is added to the system | 2d | 2017-03-29 | 2017-03-30 | 69% | mkaleem | OS-7558 |
| 42 | 1.2.2.6.3 | Implement APIs and code updated for cases where new listener is added to the system | 1d | 2017-03-31 | 2017-03-31 | 100% | mkaleem | OS-7559 |
| 43 | 1.2.2.6.4 | Update internals of DVC_Reg_Change_Search in accordance with the new design proposal. | 1d | 2017-03-31 | 2017-03-31 | 100% | mkaleem | OS-7560 |
| 44 | 1.2.2.7 | **Prototype Power management services** | 10d | 2017-03-22 | 2017-03-31 | 100% |  | OS-7636 |
| 45 | 1.2.2.7.1 | Prototype Power management services with new Device Manager. | 1d | 2017-03-22 | 2017-03-22 | 100% | msalman | OS-7555 |
| 46 | 1.2.2.7.2 | Integrate functionality list to power services | 2d | 2017-03-30 | 2017-03-31 | 100% | msalman | OS-7635 |
| 47 | 1.2.2.8 | Incorporate Design Review Feedback | -3d | 2017-03-31 | 2017-03-31 | -100% | mirfan | BSP-8226 |
